# 教育部_時程

Schedule from MS Project, 2022-03-24 to 2022-11-01.

## Calendars

- 標準: Mon-Fri 08:00-12:00, 13:00-17:00; Sat-Sun off. Exceptions (off unless hours are given): 2022-04-04 to 2022-04-05 (清明連假), 2022-05-02 (勞動節放假), 2022-06-03 (端午節放假), 2022-09-09 (中秋節), 2022-10-10 (國慶日).

## Resources

| Resource |
| --- |
| 測試腳本規劃 |
| 依據測試腳本規劃 |
| 依據測試腳本進行測試 |
| 完成驗收後一年 |
| 關於我們 |
| 聯絡我們 |
| 網路安全政策 |
| 隱私權政策 |
| 40週年頁面 |
| 404 |
| 專案計畫 |
| 最新消息 |
| 採購資訊 |
| 影音專區 |
| 常用表單 |
| 驗收通過後次日起一年 |
| 決標次日起10天內 |
| 決標次日起15天內 |
| 需求訪談會議記錄 |
| 系統分析設計規格書 |
| 決標次日起60天內(需求訪談會議記錄 |
| 系統分析設計規格書) |
| 決標次日起60天內 |
| 決標次日起90天內(電子檔) |
| 決標次日起60天內(電子檔) |
| 決標次日起15天內(電子檔) |
| 決標次日起10天內(531P3) |
| 決標次日起10天內(紙本) |
| 決標次日起150天內(電子檔) |
| 決標次日起180天內 |
| 111年10月31日前 |
| 決標次日起180天內(電子檔) |
| 111年10月31日前(電子檔) |
| 111年10月31日前(紙本及電子檔) |
| 驗收通過合格之日起一年 |
| 維護PM |
| 首頁 |
| 關於本會 |
| 精彩影音 |
| 公開資訊 |
| 隱私群政策 |
| 網站導覽 |
| 服務專區 |
| 英文頁面 |
| 包含一部分內頁() |
| 包含一部分內頁(關於本會 |
| 最新消息) |
| 服務專區(首頁 |
| 計畫介紹 |
| 友善連結 |
| 申請表單下載.辦公室位置) |
| 40週年頁面.404 |
| banner |
| 關於本會15頁內容 |
| 關於本會15頁內容設計 |
| 英文頁面(4頁) |
| 採購公告 |
| 全站搜尋頁面 |
| 消息 |
| 英文頁面(3頁) |
| 服務專區(計畫介紹) |
| 最新消息(2頁) |
| 40週年專區 |
| 服務專區(列表頁) |
| 計畫介紹(5頁) |
| 關於本會(15頁) |
| 依據測試腳本規畫進行測試 |
| 與弱掃報告一起提供 |

## Schedule

| ID | WBS | Task | Duration | Start | Finish | Predecessors | Total slack | Free slack | Constraint | Resources | Work | 備註 |
| --- | --- | --- | --- | --- | --- | --- | --- | --- | --- | --- | --- | --- |
| 1 | 1 | **財團法人台灣中小企業聯合輔導基金會官網建置及維護** | 153d? | 2022-03-24 | 2022-11-01 |  | 0d |  |  |  | 3168h |  |
| 2 | 1.1 | **需求訪談** | 4d | 2022-05-05 | 2022-05-10 |  | 122d |  |  |  |  |  |
| 3 | 1.1.1 | 需求訪談會議 | 4d | 2022-05-05 | 2022-05-10 |  | 116d |  | start no earlier than 2022-05-05 |  |  | PM,聯輔會 |
| 4 | 1.2 | **網站規劃** | 9d | 2022-04-28 | 2022-05-11 |  | 121d |  |  |  |  |  |
| 5 | 1.2.1 | 架構規劃及文件製作 | 4d | 2022-04-28 | 2022-05-04 |  | 115d | 0d | finish no earlier than 2022-05-04 |  |  | PM |
| 6 | 1.2.2 | 網站規劃確認及修改 | 5d | 2022-05-05 | 2022-05-11 | 5 | 115d |  |  |  |  | PM,聯輔會 |
| 7 | 1.3 | 素材及資料提供 | 9d | 2022-05-05 | 2022-05-17 |  | 2d | 0d | start no earlier than 2022-05-05 |  |  | PM,聯輔會 |
| 8 | 1.4 | 專案啟動會議 | 1d? | 2022-05-18 | 2022-05-18 | 7 | 2d |  |  |  |  |  |
| 9 | 1.5 | 系統分析設計規格書撰寫及提供(需求訪談會議記錄,系統分析設計規格書) | 40d | 2022-03-24 | 2022-05-23 |  | 105d | 0d | start no earlier than 2022-03-24 | 決標次日起60天內(電子檔) | 320h | PM |
| 10 | 1.6 | 測試腳本規劃(單元測試/整合測試/邊界測試) | 2d | 2022-05-24 | 2022-05-25 | 9 | 105d |  |  |  |  | PM |
| 11 | 1.7 | **開發** | 94d? | 2022-04-21 | 2022-09-01 |  | 0d |  |  |  | 2528h |  |
| 12 | 1.7.1 | 首頁風格設計 | 4d | 2022-04-21 | 2022-04-26 |  | 1d | 0d | finish no earlier than 2022-04-26 |  |  | Art |
| 13 | 1.7.2 | 首頁風格設計確認及修改 | 17d | 2022-04-27 | 2022-05-20 | 12 | 1d | 0d | start no earlier than 2022-04-27 |  |  | PM,聯輔會,Art |
| 14 | 1.7.3 | 無障礙規範研究 | 2d | 2022-05-23 | 2022-05-24 | 8, 13 | 1d | 0d | start no earlier than 2022-05-23 |  |  | 前端 |
| 15 | 1.7.4 | 切版(一)-40週年專區 | 3d | 2022-05-25 | 2022-05-27 | 14 | 1d | 0d | start no earlier than 2022-05-23 | 40週年專區 | 24h | 前端 |
| 16 | 1.7.5 | 自我檢測(一) | 2d | 2022-05-30 | 2022-05-31 | 15 | 12d | 0d |  |  |  | PM,前端 |
| 17 | 1.7.6 | 切版(二)-首頁 | 4d | 2022-06-01 | 2022-06-07 | 16 | 12d | 0d |  | 首頁 | 32h | 前端 |
| 18 | 1.7.7 | 自我檢測(二) | 2d | 2022-06-08 | 2022-06-09 | 17 | 12d | 1d |  |  |  | PM,前端 |
| 19 | 1.7.8 | 內頁設計(一) | 8d | 2022-05-23 | 2022-06-01 | 13 | 18d | 0d | finish no earlier than 2022-05-20 | 關於本會; 404; 最新消息; 精彩影音; 公開資訊; 採購公告; 全站搜尋頁面; 網站導覽; 隱私權政策; 網路安全政策; 服務專區(列表頁); 英文頁面 | 768h | Art |
| 20 | 1.7.9 | 內頁設計確認及修改(一) | 5d | 2022-06-02 | 2022-06-09 | 19 | 18d | 0d |  |  |  | PM,聯輔會,Art |
| 21 | 1.7.10 | 切版(三)-官網內頁 | 10d | 2022-06-10 | 2022-06-23 | 20, 18 | 18d | 0d |  | 關於本會; 404; 最新消息; 精彩影音; 公開資訊; 採購公告; 全站搜尋頁面; 網站導覽; 隱私權政策; 網路安全政策; 服務專區(列表頁); 英文頁面 | 960h | 前端 |
| 22 | 1.7.11 | 自我檢測(三) | 3d | 2022-06-24 | 2022-06-28 | 21 | 18d | 0d |  |  |  | PM,前端 |
| 23 | 1.7.12 | 內頁設計(二) | 8d | 2022-06-10 | 2022-06-21 | 20 | 18d | 0d |  | 服務專區(首頁; 計畫介紹; 最新消息; 友善連結; 申請表單下載.辦公室位置) | 320h | Art |
| 24 | 1.7.13 | 內頁設計確認及修改(二) | 5d | 2022-06-22 | 2022-06-28 | 23 | 18d | 0d |  |  |  | PM,聯輔會,Art |
| 25 | 1.7.14 | 切版(四)-服務專區 | 6d | 2022-06-29 | 2022-07-06 | 24, 22 | 18d | 0d |  | 服務專區(首頁; 計畫介紹; 最新消息; 友善連結; 申請表單下載.辦公室位置) | 240h | 前端 |
| 26 | 1.7.15 | 自我檢測(四) | 3d | 2022-07-07 | 2022-07-11 | 25 | 18d | 0d |  |  |  | PM,前端 |
| 27 | 1.7.16 | 切版程式碼提供 | 1d | 2022-07-12 | 2022-07-12 | 26 | 37d |  |  | 決標次日起90天內(電子檔) | 8h | PM,前端 |
| 28 | 1.7.17 | 排版設計(一) | 7d | 2022-06-29 | 2022-07-07 | 24 | 40d |  |  | 英文頁面(3頁); 計畫介紹(5頁); 關於本會(15頁) | 168h | Art |
| 29 | 1.7.18 | 系統及資料庫設計 | 5d | 2022-06-17 | 2022-06-23 | 8 | 0d |  | start no earlier than 2022-06-17 |  |  | RD |
| 30 | 1.7.19 | 後台程式開發 | 30d | 2022-06-24 | 2022-08-04 | 29 | 0d |  | start no earlier than 2022-06-17 |  |  | RD |
| 31 | 1.7.20 | 後台程式碼提供 | 1d? | 2022-08-05 | 2022-08-05 | 30 | 19d |  |  | 決標次日起150天內(電子檔) | 8h | PM,RD |
| 32 | 1.7.21 | 前台程式開發 | 20d | 2022-08-05 | 2022-09-01 | 30, 26 | 0d |  | start no earlier than 2022-06-21 |  |  | RD |

| ID | WBS | Task | Duration | Start | Finish | Predecessors | Total slack | Free slack | Constraint | Resources | Work | 備註 |
| --- | --- | --- | --- | --- | --- | --- | --- | --- | --- | --- | --- | --- |
| 33 | 1.8 | **測試** | 14d | 2022-09-02 | 2022-09-22 |  | 0d |  |  |  | 136h |  |
| 34 | 1.8.1 | 網站測試 | 7d | 2022-09-02 | 2022-09-13 | 11 | 0d |  | finish no earlier than 2022-06-20 | 依據測試腳本規畫進行測試 | 56h | PM,聯輔會 |
| 35 | 1.8.2 | 網站修改 | 7d | 2022-09-14 | 2022-09-22 | 34 | 0d |  | finish no earlier than 2022-06-22 |  |  | 前端,RD |
| 36 | 1.8.3 | 系統測試報告書製作 | 5d | 2022-09-14 | 2022-09-20 | 34, 10 | 2d |  |  | 決標次日起180天內(電子檔); 與弱掃報告一起提供 | 80h | PM |
| 37 | 1.9 | 網站上線 | 2d | 2022-09-23 | 2022-09-26 | 33 | 0d |  | finish no earlier than 2022-06-23 |  |  | PM,RD |
| 38 | 1.10 | 舊資料移轉至新站 | 10d | 2022-09-27 | 2022-10-11 | 37 | 0d |  | start no earlier than 2022-06-22 |  |  | PM,聯輔會 |
| 39 | 1.11 | 系統安全檢測報告書製作(弱掃報告) | 5d | 2022-09-27 | 2022-10-03 | 37 | 20d |  | finish no earlier than 2022-04-06 | 111年10月31日前(電子檔) | 40h | PM |
| 40 | 1.12 | 系統功能架構文件製作 | 4d | 2022-10-12 | 2022-10-17 | 38 | 0d |  |  | 111年10月31日前(紙本及電子檔) | 32h | PM |
| 41 | 1.13 | 系統資料庫架構文件製作 | 4d | 2022-10-18 | 2022-10-21 | 40 | 0d |  |  | 111年10月31日前(紙本及電子檔) | 32h | PM |
| 42 | 1.14 | 系統操作手冊製作 | 5d | 2022-10-24 | 2022-10-28 | 41 | 0d |  |  | 111年10月31日前(紙本及電子檔) | 40h | PM |
| 43 | 1.15 | **教育訓練** | 5d | 2022-10-12 | 2022-10-18 |  | 8d |  |  |  | 32h |  |
| 44 | 1.15.1 | 教材文件製作 | 2d | 2022-10-12 | 2022-10-13 | 38 | 8d | 0d |  | 111年10月31日前(紙本及電子檔) | 16h | PM |
| 45 | 1.15.2 | 教育訓練 | 1d | 2022-10-14 | 2022-10-14 | 44 | 8d | 0d | start no earlier than 2022-10-14 |  |  | PM,聯輔會 |
| 46 | 1.15.3 | 教育訓練記錄文件製作 | 2d | 2022-10-17 | 2022-10-18 | 45 | 8d |  | start no earlier than 2022-10-17 | 111年10月31日前(電子檔) | 16h | PM |
| 47 | 1.16 | **無障礙標章申請** | 22d? | 2022-09-27 | 2022-10-27 |  | 1d |  |  |  | 8h |  |
| 48 | 1.16.1 | 無障礙標章申請及準備 | 1d | 2022-09-27 | 2022-09-27 | 37 | 1d | 0d |  |  |  | PM |
| 49 | 1.16.2 | 無障礙標章審查 | 10d | 2022-09-28 | 2022-10-12 | 48 | 1d | 0d |  |  |  |  |
| 50 | 1.16.3 | 無障礙標章修改及再審確認 | 10d | 2022-10-13 | 2022-10-26 | 49 | 1d | 0d |  |  |  | PM,前端,RD |
| 51 | 1.16.4 | 無障礙標章設定至網站及提供 | 1d? | 2022-10-27 | 2022-10-27 | 50 | 1d |  |  | 111年10月31日前(電子檔) | 8h | PM,RD |
| 52 | 1.17 | **驗收** | 1d? | 2022-10-31 | 2022-10-31 |  | 0d |  |  |  |  |  |
| 53 | 1.17.1 | 交付項目清點、確認 | 1d? | 2022-10-31 | 2022-10-31 | 47, 43, 42 | 0d |  |  |  |  | PM,聯輔會 |
| 54 | 1.18 | 專案結案 | 1d? | 2022-11-01 | 2022-11-01 | 52 | 0d |  |  |  |  | PM,前端,RD,Art,聯輔會 |
